Schedule from MS Project, 2012-09-10 to 2012-12-18.

## Calendars

- Standard: Mon-Fri 08:00-12:00, 13:00-17:00; Sat-Sun off.

## Resources

| Resource |
| --- |
| ThanhLCM |
| DucHA |
| TrungTM |
| CuongNT |
| KhoiMN |

## Schedule

| ID | WBS | Task | Duration | Start | Finish | Predecessors | Total slack | Free slack | Constraint | Resources | Work |
| --- | --- | --- | --- | --- | --- | --- | --- | --- | --- | --- | --- |
| 1 | 1 | **SMS project** | 72d | 2012-09-10 | 2012-12-18 |  |  |  |  |  | 1298h |
| 2 | 1.1 | **Initiating** | 5d | 2012-09-10 | 2012-09-14 |  | -1d | 0d |  |  | 56h |
| 3 | 1.1.1 | Generate project ideas | 1d | 2012-09-10 | 2012-09-10 |  | 3d |  |  | ThanhLCM; TrungTM | 16h |
| 4 | 1.1.2 | **Create Report 1: Project Introduction** | 3d | 2012-09-11 | 2012-09-13 |  | -1d | 0d |  |  | 40h |
| 5 | 1.1.2.1 | Repare Report 1 | 1d | 2012-09-11 | 2012-09-11 |  | -1d | 0d | start no earlier than 2012-09-11 | ThanhLCM | 8h |
| 6 | 1.1.2.2 | Update Report 1 | 1d | 2012-09-12 | 2012-09-12 | 5 | -1d | 0d |  | TrungTM; CuongNT; KhoiMN | 24h |
| 7 | 1.1.2.3 | Review and finalize Report 1 | 0.5d | 2012-09-13 | 2012-09-13 | 6 | -1d | 0d |  | DucHA | 4h |
| 8 | 1.1.2.4 | Release Report 1 | 0.5d | 2012-09-13 | 2012-09-13 | 7 | -1d | 0d |  | ThanhLCM | 4h |
| 9 | 1.1.3 | Hold kick-off meeting | 1d | 2012-09-14 | 2012-09-14 | 4 | -1d | 0d |  |  |  |
| 10 | 1.2 | **Planing** | 5d | 2012-09-14 | 2012-09-20 | 2 |  |  |  |  | 64h |
| 11 | 1.2.1 | Create project plan | 1d | 2012-09-14 | 2012-09-14 |  | 0d |  |  | TrungTM; DucHA | 16h |
| 12 | 1.2.2 | **Create Report 2: Software Project Management Plan** | 4d | 2012-09-17 | 2012-09-20 | 11 | 0d |  |  |  | 48h |
| 13 | 1.2.2.1 | Repare Report 2 | 1d | 2012-09-17 | 2012-09-17 |  | 0d |  |  | TrungTM | 8h |
| 14 | 1.2.2.2 | Update Report 2 | 1d | 2012-09-18 | 2012-09-18 | 13 | 0d |  |  | DucHA; CuongNT; KhoiMN | 24h |
| 15 | 1.2.2.3 | Review and finalize Report 2 | 1d | 2012-09-19 | 2012-09-19 | 14 | 0d |  |  | TrungTM | 8h |
| 16 | 1.2.2.4 | Release Report 2 | 1d | 2012-09-20 | 2012-09-20 | 15 | 0d |  |  | ThanhLCM | 8h |
| 17 | 1.3 | **Executing** | 58d | 2012-09-21 | 2012-12-11 | 10 |  |  |  |  | 1008h |
| 18 | 1.3.1 | **Analysis** | 7d | 2012-09-21 | 2012-10-01 |  |  |  |  |  | 128h |
| 19 | 1.3.1.1 | Research Yakindu Toolkit | 2d | 2012-09-21 | 2012-09-24 |  | 5d |  |  | TrungTM; ThanhLCM | 32h |
| 20 | 1.3.1.2 | Research and buy Microchip | 2d | 2012-09-21 | 2012-09-24 |  | 5d |  |  | KhoiMN | 16h |
| 21 | 1.3.1.3 | **Write requirements** | 3d | 2012-09-21 | 2012-09-25 |  | 0d |  |  |  | 24h |
| 22 | 1.3.1.3.1 | Repare question list | 1d | 2012-09-21 | 2012-09-21 |  | 0d |  |  | DucHA | 8h |
| 23 | 1.3.1.3.2 | Get requirements from customer | 2d | 2012-09-24 | 2012-09-25 | 22 | 0d |  |  | CuongNT | 16h |
| 24 | 1.3.1.4 | **Create Report 3: Software Requirement Specification (SRS)** | 4d | 2012-09-26 | 2012-10-01 | 21 |  |  |  |  | 56h |
| 25 | 1.3.1.4.1 | Repare Report 3 | 1d | 2012-09-26 | 2012-09-26 | 21 | 0d |  |  | ThanhLCM; DucHA | 16h |
| 26 | 1.3.1.4.2 | Update Report 3 | 1d | 2012-09-27 | 2012-09-27 | 25 | 0d |  |  | TrungTM; DucHA; CuongNT | 24h |
| 27 | 1.3.1.4.3 | Review and finalize Report 3 | 1d | 2012-09-28 | 2012-09-28 | 26 | 0d |  |  | KhoiMN | 8h |
| 28 | 1.3.1.4.4 | Release Report 3 | 1d | 2012-10-01 | 2012-10-01 | 27 | 0d |  |  | ThanhLCM | 8h |

| ID | WBS | Task | Type | Duration | Start | Finish | Predecessors | Total slack | Free slack | Constraint | Resources | Work |
| --- | --- | --- | --- | --- | --- | --- | --- | --- | --- | --- | --- | --- |
| 29 | 1.3.2 | **Design** |  | 9d | 2012-10-02 | 2012-10-12 | 18 |  |  |  |  | 208h |
| 30 | 1.3.2.1 | Database design |  | 2d | 2012-10-02 | 2012-10-03 |  | 0d |  | start no earlier than 2012-10-02 | TrungTM; KhoiMN | 32h |
| 31 | 1.3.2.2 | Architecture design |  | 2d | 2012-10-02 | 2012-10-03 |  | 0d |  |  | ThanhLCM | 16h |
| 32 | 1.3.2.3 | Detailed design |  | 2d | 2012-10-02 | 2012-10-03 |  | 0d |  |  | DucHA; CuongNT | 32h |
| 33 | 1.3.2.4 | **Design Embeebed device** |  | 4d | 2012-10-04 | 2012-10-09 |  |  |  |  |  | 32h |
| 34 | 1.3.2.4.1 | Design electric device board | manual | 3d | 2012-10-04 | 2012-10-08 |  |  |  |  | ThanhLCM | 24h |
| 35 | 1.3.2.4.2 | Print board | manual | 1d | 2012-10-09 | 2012-10-09 | 34 |  |  |  | KhoiMN | 8h |
| 36 | 1.3.2.5 | **Create Yakindu Statecharts** |  | 2d | 2012-10-04 | 2012-10-05 | 30, 31, 32 |  |  |  |  | 48h |
| 37 | 1.3.2.5.1 | Statecharts for SMO device |  | 2d | 2012-10-04 | 2012-10-05 |  | 0d |  |  | DucHA | 16h |
| 38 | 1.3.2.5.2 | Statecharts for SMR device |  | 2d | 2012-10-04 | 2012-10-05 |  | 0d |  |  | TrungTM | 16h |
| 39 | 1.3.2.5.3 | Statecharts for SMC device |  | 2d | 2012-10-04 | 2012-10-05 |  | 0d |  |  | CuongNT | 16h |
| 40 | 1.3.2.6 | **Create Report 4: Software Design Description (SDD)** |  | 5d | 2012-10-08 | 2012-10-12 | 30, 31, 32 |  |  |  |  | 48h |
| 41 | 1.3.2.6.1 | Repare Report 4 |  | 1d | 2012-10-08 | 2012-10-08 |  | 1d | 0d | start no earlier than 2012-10-06 | TrungTM; KhoiMN | 16h |
| 42 | 1.3.2.6.2 | Update Report 4 |  | 1d | 2012-10-09 | 2012-10-09 | 41 | 1d | 0d |  | CuongNT; DucHA | 16h |
| 43 | 1.3.2.6.3 | Review and finalize Report 4 |  | 1d | 2012-10-10 | 2012-10-10 | 42 | 1d | 0d |  | TrungTM | 8h |
| 44 | 1.3.2.6.4 | Release Report 4 |  | 1d | 2012-10-11 | 2012-10-11 | 43 | 1d |  |  | ThanhLCM | 8h |
| 45 | 1.3.3 | **Implementation** |  | 29d | 2012-10-12 | 2012-11-21 | 29 |  |  |  |  | 480h |
| 46 | 1.3.3.1 | Create coding framework |  | 2d | 2012-10-12 | 2012-10-15 |  | 0d |  |  | ThanhLCM; TrungTM | 32h |
| 47 | 1.3.3.2 | **Coding system on Hardware Device** |  | 13d | 2012-10-16 | 2012-11-01 | 46 |  |  |  |  | 144h |
| 48 | 1.3.3.2.1 | **Coding for SMO device** |  | 6d | 2012-10-16 | 2012-10-23 | 46 |  |  |  | ThanhLCM | 48h |
| 49 | 1.3.3.2.1.1 | Generate code C language |  | 2d | 2012-10-16 | 2012-10-17 |  | 0d |  |  |  |  |
| 50 | 1.3.3.2.1.2 | Convert to assembly language |  | 2d | 2012-10-18 | 2012-10-19 | 49 | 0d |  |  |  |  |
| 51 | 1.3.3.2.1.3 | Embed to hardware device |  | 2d | 2012-10-22 | 2012-10-23 | 50 | 0d |  |  |  |  |
| 52 | 1.3.3.2.2 | **Coding for SMR device** |  | 7d | 2012-10-24 | 2012-11-01 | 48 |  |  |  |  | 48h |
| 53 | 1.3.3.2.2.1 | Generate code C language |  | 2d | 2012-10-24 | 2012-10-25 |  | 1d | 0d |  | TrungTM | 16h |
| 54 | 1.3.3.2.2.2 | Convert to assembly language |  | 2d | 2012-10-26 | 2012-10-29 | 53 | 1d | 0d |  | KhoiMN | 16h |
| 55 | 1.3.3.2.2.3 | Embed to hardware device |  | 2d | 2012-10-30 | 2012-10-31 | 54 | 1d |  |  | TrungTM | 16h |

| ID | WBS | Task | Type | Duration | Start | Finish | Predecessors | Total slack | Free slack | Resources | Work |
| --- | --- | --- | --- | --- | --- | --- | --- | --- | --- | --- | --- |
| 56 | 1.3.3.2.3 | **Coding for SMC device** |  | 7d | 2012-10-24 | 2012-11-01 | 48 |  |  |  | 48h |
| 57 | 1.3.3.2.3.1 | Generate code C language |  | 2d | 2012-10-24 | 2012-10-25 |  | 1d | 0d | DucHA | 16h |
| 58 | 1.3.3.2.3.2 | Convert to assembly language |  | 2d | 2012-10-26 | 2012-10-29 | 57 | 1d | 0d | CuongNT | 16h |
| 59 | 1.3.3.2.3.3 | Embed to hardware device |  | 2d | 2012-10-30 | 2012-10-31 | 58 | 1d |  | DucHA | 16h |
| 60 | 1.3.3.3 | **Coding system on Personal Computer** |  | 14d | 2012-11-02 | 2012-11-21 | 47 |  |  |  | 256h |
| 61 | 1.3.3.3.1 | Code Management feature |  | 6d | 2012-11-02 | 2012-11-09 |  | 0d |  | ThanhLCM | 48h |
| 62 | 1.3.3.3.2 | Code Billing feature |  | 6d | 2012-11-12 | 2012-11-19 | 61 | 0d |  | TrungTM; KhoiMN | 96h |
| 63 | 1.3.3.3.3 | Code Statistics feature |  | 6d | 2012-11-12 | 2012-11-19 | 61 | 0d |  | CuongNT; DucHA | 96h |
| 64 | 1.3.3.3.4 | Build and Review code | manual | 2d | 2012-11-20 | 2012-11-21 | 61, 62, 63 |  |  | ThanhLCM | 16h |
| 65 | 1.3.3.4 | Create Software User Mannual (SUM) document |  | 2d | 2012-10-12 | 2012-10-15 |  | 27d |  | CuongNT; KhoiMN; DucHA | 48h |
| 66 | 1.3.4 | **Testing** |  | 11d | 2012-11-22 | 2012-12-06 | 45 |  |  |  | 144h |
| 67 | 1.3.4.1 | Write system test case |  | 1d | 2012-11-22 | 2012-11-22 |  | 0d |  | DucHA | 8h |
| 68 | 1.3.4.2 | Execute system test |  | 3d | 2012-11-23 | 2012-11-27 | 67 | 0d |  | CuongNT; KhoiMN | 48h |
| 69 | 1.3.4.3 | System test completed |  | 1d | 2012-11-28 | 2012-11-28 | 68 | 0d |  | TrungTM | 8h |
| 70 | 1.3.4.4 | **Create Report 5: Software Test Documentation (STD)** |  | 4d | 2012-11-29 | 2012-12-04 | 67, 56, 69 |  |  |  | 40h |
| 71 | 1.3.4.4.1 | Repare Report 5 |  | 1d | 2012-11-29 | 2012-11-29 |  | 0d |  | TrungTM | 8h |
| 72 | 1.3.4.4.2 | Update Report 5 |  | 1d | 2012-11-30 | 2012-11-30 | 71 | 0d |  | CuongNT; KhoiMN | 16h |
| 73 | 1.3.4.4.3 | Review and finalize Report 5 |  | 1d | 2012-12-03 | 2012-12-03 | 72 | 0d |  | DucHA | 8h |
| 74 | 1.3.4.4.4 | Release Report 5 |  | 1d | 2012-12-04 | 2012-12-04 | 73 | 0d |  | ThanhLCM | 8h |
| 75 | 1.3.4.5 | **Create Report 6: Software User Manual (SUM)** |  | 5d | 2012-11-30 | 2012-12-06 |  |  |  |  | 40h |
| 76 | 1.3.4.5.1 | Repare Report 6 |  | 1d | 2012-11-30 | 2012-11-30 |  | 1d | 0d | TrungTM | 8h |
| 77 | 1.3.4.5.2 | Update Report 6 |  | 1d | 2012-12-03 | 2012-12-03 | 76 | 1d | 0d | CuongNT; KhoiMN | 16h |
| 78 | 1.3.4.5.3 | Review and finalize Report 6 |  | 1d | 2012-12-04 | 2012-12-04 | 77 | 1d | 0d | DucHA | 8h |
| 79 | 1.3.4.5.4 | Release Report 6 |  | 1d | 2012-12-05 | 2012-12-05 | 78 | 1d |  | ThanhLCM | 8h |

| ID | WBS | Task | Type | Duration | Start | Finish | Predecessors | Total slack | Free slack | Resources | Work |
| --- | --- | --- | --- | --- | --- | --- | --- | --- | --- | --- | --- |
| 80 | 1.3.5 | **Deployment** |  | 4d | 2012-12-06 | 2012-12-11 | 66 |  |  |  | 48h |
| 81 | 1.3.5.1 | Input initial data |  | 2d | 2012-12-06 | 2012-12-07 |  | 1d | 0d | CuongNT; KhoiMN | 32h |
| 82 | 1.3.5.2 | System deployed |  | 1d | 2012-12-10 | 2012-12-10 | 81 | 1d |  | TrungTM; DucHA | 16h |
| 83 | 1.4 | **Closing** |  | 5d | 2012-12-12 | 2012-12-18 | 17 |  |  |  | 170h |
| 84 | 1.4.1 | Prepare final project presentation |  | 4d | 2012-12-12 | 2012-12-17 |  | 0.75d | 0d | DucHA; TrungTM; CuongNT; KhoiMN; ThanhLCM | 160h |
| 85 | 1.4.2 | Project presentation |  | 2h | 2012-12-18 | 2012-12-18 | 84 | 0.75d | 0d | CuongNT; DucHA; KhoiMN; ThanhLCM; TrungTM | 10h |
| 86 | 1.4.3 | Project completed | milestone | 0d | 2012-12-18 | 2012-12-18 | 85 | 0.75d |  |  |  |
